# ctools

How a schedule from MS Project changed from version to version. A marks actual dates.

## Version 1 (saved 2019-04-07)

Note of the change: MP1: Implement pizz

| ID | WBS | Task | Duration | Start | Finish | Predecessors | Total float |
| --- | --- | --- | --- | --- | --- | --- | --- |
| 1 |  | Убрать исходный код Mgen из открытого доступа | 1d? | 2019-04-08 | 2019-04-08 |  | 279d |
| 2 |  | Тестирование и устранение недостатков в текущем функционале сайта Composer Tools и алгоритмов озвучивания | 40d | 2019-04-08 | 2019-05-31 |  | 240d |
| 3 |  | Купить и настроить второй сервер | 10d | 2019-04-08 | 2019-04-19 |  | 270d |
| 4 |  | Разработка и внедрение SLA | 10d | 2019-04-08 | 2019-04-19 |  | 270d |
| 5 |  | Тестирование и устранение недостатков в текущем функционале анализа контрапункта | 60d | 2019-04-08 | 2019-06-28 |  | 220d |
| 6 |  | Формирование дерева возможных партнеров и каналов сбыта | 20d | 2019-04-08 | 2019-05-03 |  | 260d |
| 7 | 7 | **Анализ гармонии** | 280d | 2019-04-08 | 2020-05-01 |  | 0d |
| 8 |  | Разработка | 200d | 2019-04-08 | 2020-01-10 |  | 0d |
| 9 |  | Тестирование | 80d | 2020-01-13 | 2020-05-01 | 8 | 0d |
| 10 | 8 | **Генерация многоголосного контрапункта** | 160d | 2019-04-08 | 2019-11-15 |  | 100d |
| 11 |  | Разработка | 100d | 2019-04-08 | 2019-08-23 |  | 100d |
| 12 |  | Тестирование | 60d | 2019-08-26 | 2019-11-15 | 11 | 120d |
| 13 | 9 | **Коррекция многоголосного контрапункта** | 80d | 2019-08-26 | 2019-12-13 |  | 100d |
| 14 |  | Разработка | 40d | 2019-08-26 | 2019-10-18 | 11 | 100d |
| 15 |  | Тестирование | 40d | 2019-10-21 | 2019-12-13 | 14 | 100d |
| 16 | 10 | **Линия баса** | 140d | 2019-04-08 | 2019-10-18 |  | 140d |
| 17 |  | Разработка анализа | 50d | 2019-04-08 | 2019-06-14 |  | 140d |
| 18 |  | Тестирование анализа | 30d | 2019-06-17 | 2019-07-26 | 17 | 200d |
| 19 |  | Разработка генерации | 40d | 2019-06-17 | 2019-08-09 | 17 | 140d |
| 20 |  | Тестирование генерации | 30d | 2019-08-12 | 2019-09-20 | 19 | 160d |
| 21 |  | Разработка коррекции | 30d | 2019-08-12 | 2019-09-20 | 19 | 140d |
| 22 |  | Тестирование коррекции | 20d | 2019-09-23 | 2019-10-18 | 21 | 140d |
| 23 | 11 | **Генерация гармонии** | 130d | 2019-04-08 | 2019-10-04 |  | 150d |
| 24 |  | Разработка | 80d | 2019-04-08 | 2019-07-26 |  | 150d |
| 25 |  | Тестирование | 50d | 2019-07-29 | 2019-10-04 | 24 | 150d |

## Version 2 (saved 2019-04-07)

Note of the change: Small changes

Last finish 2020-05-01 → 2022-08-19 (+840d).

Added:

| ID | Task | Duration | Start | Finish | Predecessors | Resources |
| --- | --- | --- | --- | --- | --- | --- |
| 1 | **Повышение качества** | 60d | 2019-04-08 | 2019-06-28 |  |  |
| 4 | **Подготовить Ctools к коммерческому использованию** | 73d | 2019-04-08 | 2019-07-17 |  |  |
| 6 | Переименовать Mgen и Composer Tools, перевести на новый домен | 5d | 2019-04-15 | 2019-04-19 | 5 | Morpheus; Rualark; Shegolev |
| 7 | Мигрировать заявки на новую платформу с waffle | 3d | 2019-04-22 | 2019-04-24 | 6 | Rualark |
| 8 | Ревизия и доработка сайта | 5d | 2019-04-25 | 2019-05-01 | 7 |  |
| 9 | Ревизия и доработка документации | 5d | 2019-05-02 | 2019-05-08 | 8 | Morpheus; Rualark |
| 12 | Внедрение подписок и бесплатного режима. Определение цен. | 10d | 2019-06-06 | 2019-06-19 | 11 | Morpheus; Rualark |
| 13 | Построить новую систему тестирования вместо Appveyor | 20d | 2019-06-20 | 2019-07-17 | 12 | Rualark |
| 14 | **Привлечение клиентов** | 20d | 2019-06-20 | 2019-07-17 |  |  |
| 15 | Разработка программы привлечения клиентов | 20d | 2019-06-20 | 2019-07-17 | 12 | Morpheus |
| 16 | **Интеграция с первыми партнерами** | 120d | 2019-04-08 | 2019-09-20 |  |  |
| 18 | Подготовка презентации и видео для партнеров | 10d | 2019-05-06 | 2019-05-17 | 17 | Morpheus |
| 19 | Установка контактов с первыми партнерами | 20d | 2019-05-20 | 2019-06-14 | 18 | Morpheus |
| 20 | Заключение договора с первыми партнерами | 20d | 2019-06-17 | 2019-07-12 | 19 | Morpheus |
| 21 | Разработка протокола интеграции | 10d | 2019-06-17 | 2019-06-28 | 19 | Rualark |
| 22 | Интеграция с первыми партнерами | 20d | 2019-07-01 | 2019-07-26 | 21 | Rualark |
| 23 | Внедрение системы заявок на обслуживание | 20d | 2019-06-17 | 2019-07-12 | 19 | Morpheus; Rualark |
| 24 | Опытная эксплуатация с первыми партнерами | 40d | 2019-07-29 | 2019-09-20 | 22 | Morpheus; Rualark |
| 25 | **Новый функционал** | 760d | 2019-09-23 | 2022-08-19 |  |  |
| 45 | **Анализ оркестровки** | 140d | 2021-10-18 | 2022-04-29 |  |  |
| 46 | Разработка | 80d | 2021-10-18 | 2022-02-04 | 43 | Rualark; Shegolev |
| 47 | Тестирование | 60d | 2022-02-07 | 2022-04-29 | 46 | Rualark; Shegolev |
| 48 | **Озвучивание MusicXML файлов** | 140d | 2022-02-07 | 2022-08-19 |  |  |
| 49 | Разработка | 80d | 2022-02-07 | 2022-05-27 | 46 | Rualark |
| 50 | Тестирование | 60d | 2022-05-30 | 2022-08-19 | 49 | Rualark; Shegolev |

Changed:

| ID | Task | Start | Finish | Duration | Total float | Predecessors | Other |
| --- | --- | --- | --- | --- | --- | --- | --- |
| 2 | Тестирование и устранение недостатков в текущем функционале сайта Composer Tools и алгоритмов озвучивания |  | 2019-05-31 → 2019-06-28 (+28d) | 40d → 60d | 240d → 650d |  | resources none → Rualark; Shegolev |
| 3 | Тестирование и устранение недостатков в текущем функционале анализа контрапункта |  |  |  | 220d → 650d |  | resources none → Rualark; Shegolev |
| 5 | Убрать исходный код Mgen из открытого доступа. Перевести репозитарий на новый хостинг. |  | 2019-04-08 → 2019-04-12 (+4d) | 1d? → 5d | 279d → 647d |  | was named Убрать исходный код Mgen из открытого доступа; resources none → Rualark |
| 10 | Купить и настроить второй сервер | 2019-04-08 → 2019-05-09 (+31d) | 2019-04-19 → 2019-05-22 (+33d) |  | 270d → 807d | none → 9 | resources none → Rualark |
| 11 | Разработка и внедрение SLA | 2019-04-08 → 2019-05-23 (+45d) | 2019-04-19 → 2019-06-05 (+47d) |  | 270d → 807d | none → 10 | resources none → Morpheus; Rualark |
| 26 | **Анализ гармонии** | 2019-04-08 → 2019-09-23 (+168d) | 2020-05-01 → 2020-10-16 (+168d) |  |  |  |  |
| 27 | Разработка | 2019-04-08 → 2019-09-23 (+168d) | 2020-01-10 → 2020-06-26 (+168d) |  |  | none → 16 | resources none → Rualark; Shegolev |
| 28 | Тестирование | 2020-01-13 → 2020-06-29 (+168d) | 2020-05-01 → 2020-10-16 (+168d) |  | 0d → 480d |  | resources none → Rualark; Shegolev |
| 29 | **Генерация многоголосного контрапункта** | 2019-04-08 → 2020-06-29 (+448d) | 2019-11-15 → 2021-02-05 (+448d) |  | 100d → 0d |  |  |
| 30 | Разработка | 2019-04-08 → 2020-06-29 (+448d) | 2019-08-23 → 2020-11-13 (+448d) |  | 100d → 0d | none → 27 | resources none → Rualark; Shegolev |
| 31 | Тестирование | 2019-08-26 → 2020-11-16 (+448d) | 2019-11-15 → 2021-02-05 (+448d) |  | 120d → 400d |  | resources none → Rualark; Shegolev |
| 32 | **Коррекция многоголосного контрапункта** | 2019-08-26 → 2020-11-16 (+448d) | 2019-12-13 → 2021-03-05 (+448d) |  | 100d → 0d |  |  |
| 33 | Разработка | 2019-08-26 → 2020-11-16 (+448d) | 2019-10-18 → 2021-01-08 (+448d) |  | 100d → 0d |  | resources none → Rualark; Shegolev |
| 34 | Тестирование | 2019-10-21 → 2021-01-11 (+448d) | 2019-12-13 → 2021-03-05 (+448d) |  | 100d → 380d |  | resources none → Rualark; Shegolev |
| 35 | **Линия баса** | 2019-04-08 → 2021-01-11 (+644d) | 2019-10-18 → 2021-07-23 (+644d) |  | 140d → 0d |  |  |
| 36 | Разработка анализа | 2019-04-08 → 2021-01-11 (+644d) | 2019-06-14 → 2021-03-19 (+644d) |  | 140d → 0d | none → 33 | resources none → Rualark; Shegolev |
| 37 | Тестирование анализа | 2019-06-17 → 2021-03-22 (+644d) | 2019-07-26 → 2021-04-30 (+644d) |  | 200d → 340d |  | resources none → Rualark; Shegolev |
| 38 | Разработка генерации | 2019-06-17 → 2021-03-22 (+644d) | 2019-08-09 → 2021-05-14 (+644d) |  | 140d → 0d |  | resources none → Rualark; Shegolev |
| 39 | Тестирование генерации | 2019-08-12 → 2021-05-17 (+644d) | 2019-09-20 → 2021-06-25 (+644d) |  | 160d → 300d |  | resources none → Rualark; Shegolev |
| 40 | Разработка коррекции | 2019-08-12 → 2021-05-17 (+644d) | 2019-09-20 → 2021-06-25 (+644d) |  | 140d → 0d |  | resources none → Rualark; Shegolev |
| 41 | Тестирование коррекции | 2019-09-23 → 2021-06-28 (+644d) | 2019-10-18 → 2021-07-23 (+644d) |  | 140d → 280d |  | resources none → Rualark; Shegolev |
| 42 | **Генерация гармонии** | 2019-04-08 → 2021-06-28 (+812d) | 2019-10-04 → 2021-12-24 (+812d) |  | 150d → 0d |  |  |
| 43 | Разработка | 2019-04-08 → 2021-06-28 (+812d) | 2019-07-26 → 2021-10-15 (+812d) |  | 150d → 0d | none → 40 | resources none → Rualark; Shegolev |
| 44 | Тестирование | 2019-07-29 → 2021-10-18 (+812d) | 2019-10-04 → 2021-12-24 (+812d) |  | 150d → 170d |  | resources none → Rualark; Shegolev |

## Version 3 (saved 2019-04-07)

Note of the change: Small changes

Last finish stays 2022-08-19.

Changed:

| ID | Task | Other |
| --- | --- | --- |
| 8 | Ревизия и доработка сайта | resources none → Morpheus; Rualark |
